# Simple Tracking_Start

Schedule from MS Project, 2015-01-05 to 2015-03-02, status date 2015-01-19, costs in $, A marks actual dates.
New book launch schedule
Lucerne Publishing
New children's book for spring release

## Calendars

- Standard: Mon-Fri 08:00-12:00, 13:00-17:00; Sat-Sun off. Exceptions (off unless hours are given): 2015-01-22 (Staff at morale event).

## Resources

| Resource | Rate | Notes |
| --- | --- | --- |
| Phạm Tấn Hoàng | 42 |  |
| Trương Thanh Mai | 27.5 | Sharons standard pay rate is adjusted for her half-time work schedule. |
| Lại Hữu Diệp | 67.5 | Toby worked on launch campaigns for Toni Poes previous two books. |
| Tạ Thanh Hải |  |  |
| Nguyễn Thúy An | 55 |  |
| Copyeditors | 45 |  |
| Travel |  |  |
| Trần Thanh Điện | 52.5 |  |
| Dan Jump | 75.5 |  |
| Huỳnh Phương Nam | 38.75 |  |
| Lê Xuân Thy | 55 |  |
| John Evans | 69.5 |  |
| Katie Jordan | 48 |  |
| Luis Sousa | 70 |  |
| Printing Service |  |  |
| Robin Wood | 44 |  |
| Ngô Thanh Phúc | 22 |  |
| William Flash |  |  |

## Schedule

| ID | WBS | Task | Type | Duration | Start | Finish | Predecessors | Complete | Remaining | Baseline start | Baseline finish | Baseline duration | Total slack | Free slack | Resources | Work | Actual work | Cost | Baseline cost | Actual cost |
| --- | --- | --- | --- | --- | --- | --- | --- | --- | --- | --- | --- | --- | --- | --- | --- | --- | --- | --- | --- | --- |
| 1 | 1 | **Giai đoạn lập kế hoạch** |  | 11d | 2015-01-05 A | 2015-01-19 A |  | 100% |  | 2015-01-05 | 2015-01-19 | 11d |  |  |  | 248h | 248h | 11,900 | 11,900 | 11,900 |
| 2 | 1.1 | Chỉ định các thành viên trong nhóm phát hành |  | 1d | 2015-01-05 A | 2015-01-05 A |  | 100% |  | 2015-01-05 | 2015-01-05 | 1d |  |  | Trần Thanh Điện | 8h | 8h | 420 | 420 | 420 |
| 3 | 1.2 | Hoàn thảnh bảng câu hỏi về tác giả |  | 1w | 2015-01-06 A | 2015-01-12 A | 2 | 100% |  | 2015-01-06 | 2015-01-12 | 1w |  |  | Tạ Thanh Hải | 40h | 40h |  |  |  |
| 4 | 1.3 | Lên lịch phỏng vấn tác giả |  | 1w | 2015-01-05 A | 2015-01-12 A | 2 | 100% |  | 2015-01-05 | 2015-01-12 | 1w |  |  | Phạm Tấn Hoàng | 40h | 40h | 1,680 | 1,680 | 1,680 |
| 5 | 1.4 | Thiết kế và đặt hàng tài liệu tiếp thị |  | 2w | 2015-01-06 A | 2015-01-19 A | 2 | 100% |  | 2015-01-06 | 2015-01-19 | 2w |  |  | Lại Hữu Diệp; Nguyễn Thúy An | 160h | 160h | 9,800 | 9,800 | 9,800 |
| 6 | 1.5 | Lập kế hoạch hoàn tất! | milestone | 0d | 2015-01-19 A | 2015-01-19 A | 5 | 100% |  | 2015-01-19 | 2015-01-19 | 0d |  |  |  |  |  |  |  |  |
| 7 | 2 | **Giai đoạn ra mắt nội bộ** |  | 16.97d | 2015-01-20 A | 2015-02-12 | 1 | 69% | 5.27d | 2015-01-20 | 2015-02-10 | 15d | 0d |  |  | 332h | 204h | 16,924.14 | 15,542 | 11,062.14 |
| 8 | 2.1 | Khởi động cuộc họp ra mắt sách |  | 1d | 2015-01-20 A | 2015-01-20 A |  | 100% |  | 2015-01-20 | 2015-01-20 | 1d |  |  | Trương Thanh Mai [50%]; Nguyễn Thúy An | 12h | 12h | 550 | 550 | 550 |
| 9 | 2.2 | Soạn báo cáo lời-lỗ về sách |  | 3d | 2015-01-21 A | 2015-01-26 A | 8 | 100% |  | 2015-01-21 | 2015-01-26 | 3d |  |  | Trần Thanh Điện | 24h | 24h | 1,260 | 1,260 | 1,260 |
| 10 | 2.3 | Lập kế hoạch cho hành trình của tác giả |  | 7d | 2015-01-20 A | 2015-01-29 A | 8 | 100% |  | 2015-01-20 | 2015-01-29 | 7d |  |  | Lê Xuân Thy | 56h | 56h | 3,080 | 3,080 | 3,080 |
| 11 | 2.4 | Chuẩn bị kênh bán hàng |  | 8.97d | 2015-01-21 A | 2015-02-03 A | 8 | 100% |  | 2015-01-21 | 2015-01-30 | 7d |  |  | Huỳnh Phương Nam; Lại Hữu Diệp | 112h | 112h | 6,172.14 | 4,790 | 6,172.14 |
| 12 | 2.5 | Hoàn thành mẫu ra mắt sách |  | 2d | 2015-02-03 | 2015-02-05 | 11 |  |  | 2015-02-02 | 2015-02-03 | 2d | 5d |  | Ngô Thanh Phúc; Nguyễn Thúy An | 32h |  | 1,232 | 1,232 |  |
| 13 | 2.6 | Chuẩn bị bộ công cụ bán sách |  | 1w | 2015-02-03 | 2015-02-10 | 8, 11 |  |  | 2015-02-02 | 2015-02-06 | 1w | 0d |  | Huỳnh Phương Nam; Nguyễn Thúy An | 80h |  | 3,750 | 3,750 |  |
| 14 | 2.7 | Phân phối tài liệu marketing nội bộ |  | 2d | 2015-02-10 | 2015-02-12 | 13 |  |  | 2015-02-09 | 2015-02-10 | 2d | 0d |  | Nguyễn Thúy An | 16h |  | 880 | 880 |  |
| 15 | 3 | **Giai đoạn ra mắt sách công khai** |  | 12d | 2015-02-12 | 2015-03-02 | 7 |  |  | 2015-02-11 | 2015-02-26 | 12d | 0d |  |  | 280h |  | 13,352 | 13,352 |  |
| 16 | 3.1 | **Tác giả xuất hiện và đi quảng bá** |  | 2d | 2015-02-12 | 2015-02-16 |  |  |  | 2015-02-11 | 2015-02-12 | 2d | 10d |  |  | 16h |  | 800 | 800 |  |
| 17 | 3.1.1 | Phỏng vấn tác giả qua radio |  | 1d | 2015-02-12 | 2015-02-13 |  |  |  | 2015-02-11 | 2015-02-11 | 1d | 10d | 0d | Tạ Thanh Hải | 8h |  |  |  |  |
| 18 | 3.1.2 | Tác giả đọc và ký tặng tại hội chợ sách |  | 1d | 2015-02-13 | 2015-02-16 | 17 |  |  | 2015-02-12 | 2015-02-12 | 1d | 10d |  | Tạ Thanh Hải; Travel [0.1%] | 8h |  | 800 | 800 |  |
| 19 | 3.2 | Phân phối thêm copy của sách |  | 2d | 2015-02-12 | 2015-02-16 |  |  |  | 2015-02-11 | 2015-02-12 | 2d | 10d |  | Lại Hữu Diệp; Ngô Thanh Phúc | 32h |  | 1,432 | 1,432 |  |
| 20 | 3.3 | Phân phối bộ công cụ bán sách |  | 2d | 2015-02-12 | 2015-02-16 |  |  |  | 2015-02-11 | 2015-02-12 | 2d | 0d |  | Nguyễn Thúy An | 16h |  | 880 | 880 |  |
| 21 | 3.4 | Coordinate magazine feature articles |  | 7d | 2015-02-16 | 2015-02-25 | 20 |  |  | 2015-02-13 | 2015-02-23 | 7d | 3d |  | Nguyễn Thúy An | 56h |  | 3,080 | 3,080 |  |
| 22 | 3.5 | Launch public web portal for book |  | 1w | 2015-02-16 | 2015-02-23 | 20 |  |  | 2015-02-13 | 2015-02-19 | 1w | 0d |  | Lại Hữu Diệp; Ngô Thanh Phúc | 80h |  | 3,580 | 3,580 |  |
| 23 | 3.6 | Launch social media programs for book |  | 1w | 2015-02-23 | 2015-03-02 | 22 |  |  | 2015-02-20 | 2015-02-26 | 1w | 0d |  | Lại Hữu Diệp; Ngô Thanh Phúc | 80h |  | 3,580 | 3,580 |  |
| 24 | 3.7 | Launch complete! | milestone | 0d | 2015-03-02 | 2015-03-02 | 21, 22, 23 |  |  | 2015-02-26 | 2015-02-26 | 0d | 0d |  |  |  |  |  |  |  |

Notes:
- 19: Get recipient list from publicist
