# Phát triển phần mềm

Schedule from MS Project, 2023-06-26 to 2023-11-10, status date 2023-08-18, costs in $, A marks actual dates.

## Calendars

- Standard: Mon-Fri 08:00-12:00, 13:00-17:00; Sat-Sun off.

## Resources

| Resource | Group | Rate |
| --- | --- | --- |
| Nguyễn Minh Quân | Management | 80 |
| Phạm Quốc Huy | Project Manager | 60 |
| Đặng Thu Uyên | Analyst | 45 |
| Nguyễn Anh Dũng | Developer | 40 |
| Hoàng Kim | Testers | 28 |
| Lưu Bảo Châu | Trainers | 30 |
| Đặng Thanh Trúc | Technical Communicators | 32 |
| Lê Quốc Huy | Deployment Team | 45 |
| Lê Thảo Nhi | Management | 80 |
| Vũ Thanh Tâm | Project Manager | 60 |
| Bùi Hoàng Phúc | Analyst | 45 |
| Trần Bảo Long | Developer | 42 |
| Trần Vy | Testers | 28 |
| Phạm Hồng Hạnh | Trainers | 30 |
| Võ Nhật Linh | Technical Communicators | 32 |
| Phạm Hữu Khang | Developer | 40 |
| Đoàn Minh Trí | Developer | 38 |
| Nguyễn Gia Phát | Testers | 26 |
| Đỗ Tài | Deployment Team | 35 |
| Mai Khánh An | Deployment Team | 35 |

## Schedule

| ID | WBS | Task | Type | Duration | Start | Finish | Predecessors | Complete | Baseline start | Baseline finish | Baseline duration | Resources | Work | Actual work | Cost | Baseline cost | Actual cost |
| --- | --- | --- | --- | --- | --- | --- | --- | --- | --- | --- | --- | --- | --- | --- | --- | --- | --- |
| 1 | 1 | **Xác định phạm vi** |  | 3.5d | 2023-06-26 A | 2023-06-29 A |  | 100% | 2023-06-26 | 2023-06-29 | 3.5d |  | 28h | 28h | 1,920 | 3,600 | 1,920 |
| 2 | 1.1 | Xác định phạm vi dự án |  | 4h | 2023-06-26 A | 2023-06-26 A |  | 100% | 2023-06-26 | 2023-06-26 | 4h | Nguyễn Minh Quân | 4h | 4h | 320 | 1,200 | 320 |
| 3 | 1.2 | Đảm bảo nhà tài trợ dự án |  | 1d | 2023-06-26 A | 2023-06-27 A | 2 | 100% | 2023-06-26 | 2023-06-27 | 1d | Nguyễn Minh Quân | 8h | 8h | 640 | 2,400 | 640 |
| 4 | 1.3 | Xác định nguồn lực sơ bộ |  | 1d | 2023-06-27 A | 2023-06-28 A | 3 | 100% | 2023-06-27 | 2023-06-28 | 1d | Phạm Quốc Huy | 8h | 8h | 480 |  | 480 |
| 5 | 1.4 | Đảm bảo nguồn lực cốt lõi |  | 1d | 2023-06-28 A | 2023-06-29 A | 4 | 100% | 2023-06-28 | 2023-06-29 | 1d | Phạm Quốc Huy | 8h | 8h | 480 |  | 480 |
| 6 | 1.5 | Hoàn tất phạm vi | milestone | 0d | 2023-06-29 A | 2023-06-29 A | 5 | 100% | 2023-06-29 | 2023-06-29 | 0d |  |  |  |  |  |  |
| 7 | 2 | **Phân tích/Yêu cầu phần mềm** |  | 11.5d | 2023-06-29 A | 2023-07-14 A |  | 100% | 2023-06-29 | 2023-07-19 | 14d |  | 120h | 120h | 6,200 | 1,200 | 6,200 |
| 8 | 2.1 | Phân tích nhu cầu |  | 5d | 2023-06-29 A | 2023-07-06 A | 6 | 100% | 2023-06-29 | 2023-07-06 | 5d | Đặng Thu Uyên | 40h | 40h | 1,800 |  | 1,800 |
| 9 | 2.2 | Phác thảo đặc tả phần mềm sơ bộ |  | 1.5d | 2023-07-06 A | 2023-07-07 A | 8 | 100% | 2023-07-06 | 2023-07-11 | 3d | Đặng Thu Uyên; Phạm Quốc Huy | 24h | 24h | 1,260 |  | 1,260 |
| 10 | 2.3 | Lập ngân sách sơ bộ |  | 1d | 2023-07-10 A | 2023-07-10 A | 9 | 100% | 2023-07-11 | 2023-07-13 | 2d | Phạm Quốc Huy; Đặng Thu Uyên | 16h | 16h | 840 |  | 840 |
| 11 | 2.4 | Rà soát đặc tả/ngân sách với đội dự án |  | 4h | 2023-07-11 A | 2023-07-11 A | 10 | 100% | 2023-07-13 | 2023-07-13 | 4h | Phạm Quốc Huy; Đặng Thu Uyên | 8h | 8h | 420 |  | 420 |
| 12 | 2.5 | Cập nhật phản hồi về đặc tả phần mềm |  | 1d | 2023-07-11 A | 2023-07-12 A | 11 | 100% | 2023-07-14 | 2023-07-14 | 1d | Đặng Thu Uyên | 8h | 8h | 360 |  | 360 |
| 13 | 2.6 | Xây dựng lộ trình bàn giao |  | 1d | 2023-07-12 A | 2023-07-13 A | 12 | 100% | 2023-07-17 | 2023-07-17 | 1d | Phạm Quốc Huy | 8h | 8h | 480 |  | 480 |
| 14 | 2.7 | Xin phê duyệt để triển khai (ý tưởng, tiến độ, ngân sách) |  | 4h | 2023-07-13 A | 2023-07-13 A | 13 | 100% | 2023-07-18 | 2023-07-18 | 4h | Nguyễn Minh Quân; Phạm Quốc Huy | 8h | 8h | 560 | 1,200 | 560 |
| 15 | 2.8 | Đảm bảo nguồn lực cần thiết |  | 1d | 2023-07-14 A | 2023-07-14 A | 14 | 100% | 2023-07-18 | 2023-07-19 | 1d | Phạm Quốc Huy | 8h | 8h | 480 |  | 480 |
| 16 | 2.9 | Hoàn tất phân tích | milestone | 0d | 2023-07-14 A | 2023-07-14 A | 15 | 100% | 2023-07-19 | 2023-07-19 | 0d |  |  |  |  |  |  |
| 17 | 3 | **Thiết kế** |  | 14.5d | 2023-07-17 A | 2023-08-04 A |  | 100% | 2023-07-19 | 2023-08-08 | 14.5d |  | 120h | 120h | 6,440 | 8,400 | 6,440 |
| 18 | 3.1 | Rà soát đặc tả phần mềm sơ bộ |  | 2d | 2023-07-17 A | 2023-07-18 A | 16 | 100% | 2023-07-19 | 2023-07-21 | 2d | Đặng Thu Uyên | 16h | 16h | 720 |  | 720 |
| 19 | 3.2 | Xây dựng đặc tả chức năng |  | 5d | 2023-07-19 A | 2023-07-25 A | 18 | 100% | 2023-07-21 | 2023-07-28 | 5d | Đặng Thu Uyên | 40h | 40h | 1,800 |  | 1,800 |
| 20 | 3.3 | Phát triển nguyên mẫu dựa trên đặc tả chức năng |  | 4d | 2023-07-26 A | 2023-07-31 A | 19 | 100% | 2023-07-28 | 2023-08-03 | 4d | Đặng Thu Uyên | 32h | 32h | 1,440 |  | 1,440 |
| 21 | 3.4 | Rà soát đặc tả chức năng |  | 2d | 2023-08-01 A | 2023-08-02 A | 20 | 100% | 2023-08-03 | 2023-08-07 | 2d | Nguyễn Minh Quân | 16h | 16h | 1,280 | 4,800 | 1,280 |
| 22 | 3.5 | Cập nhật phản hồi vào đặc tả chức năng |  | 1d | 2023-08-03 A | 2023-08-03 A | 21 | 100% | 2023-08-07 | 2023-08-08 | 1d | Nguyễn Minh Quân | 8h | 8h | 640 | 2,400 | 640 |
| 23 | 3.6 | Xin phê duyệt để tiếp tục |  | 4h | 2023-08-04 A | 2023-08-04 A | 22 | 100% | 2023-08-08 | 2023-08-08 | 4h | Nguyễn Minh Quân; Phạm Quốc Huy | 8h | 8h | 560 | 1,200 | 560 |
| 24 | 3.7 | Hoàn tất thiết kế | milestone | 0d | 2023-08-04 A | 2023-08-04 A | 23 | 100% | 2023-08-08 | 2023-08-08 | 0d |  |  |  |  |  |  |

| ID | WBS | Task | Type | Duration | Start | Finish | Predecessors | Complete | Remaining | Baseline start | Baseline finish | Baseline duration | Total slack | Free slack | Resources | Work | Actual work | Cost | Actual cost |
| --- | --- | --- | --- | --- | --- | --- | --- | --- | --- | --- | --- | --- | --- | --- | --- | --- | --- | --- | --- |
| 25 | 4 | **Phát triển** |  | 37d | 2023-08-04 A | 2023-09-26 |  | 32% | 25.23d | 2023-08-09 | 2023-09-22 | 33d | 0d |  |  | 264h | 84h | 10,560 | 3,360 |
| 26 | 4.1 | Rà soát đặc tả chức năng |  | 1d | 2023-08-04 A | 2023-08-07 A | 24 | 100% |  | 2023-08-09 | 2023-08-09 | 1d |  |  | Nguyễn Anh Dũng | 8h | 8h | 320 | 320 |
| 27 | 4.2 | Xác định tham số thiết kế mô-đun/tầng |  | 1d | 2023-08-07 A | 2023-08-08 A | 26 | 100% |  | 2023-08-10 | 2023-08-10 | 1d |  |  | Nguyễn Anh Dũng | 8h | 8h | 320 | 320 |
| 28 | 4.3 | Phân công nhân sự phát triển |  | 1d | 2023-08-08 A | 2023-08-09 A | 27 | 100% |  | 2023-08-11 | 2023-08-11 | 1d |  |  | Nguyễn Anh Dũng | 8h | 8h | 320 | 320 |
| 29 | 4.4 | Phát triển mã nguồn |  | 15d | 2023-08-09 A | 2023-08-30 | 28 | 50% | 7.5d | 2023-08-14 | 2023-09-01 | 15d | 0d |  | Nguyễn Anh Dũng | 120h | 60h | 4,800 | 2,400 |
| 30 | 4.5 | Kiểm thử của lập trình viên (gỡ lỗi chính) |  | 15d | 2023-09-05 | 2023-09-26 | 29FS-7.5% |  |  | 2023-09-04 | 2023-09-22 | 15d | 0d |  | Nguyễn Anh Dũng | 120h |  | 4,800 |  |
| 31 | 4.6 | Hoàn tất phát triển | milestone | 0d | 2023-09-26 | 2023-09-26 | 30 |  |  | 2023-09-22 | 2023-09-22 | 0d | 0d |  |  |  |  |  |  |
| 32 | 5 | **Kiểm thử** |  | 56.33d | 2023-08-04 A | 2023-10-23 |  | 16% | 47.32d | 2023-08-09 | 2023-10-31 | 60d | 14d |  |  | 280h | 32h | 8,384 | 896 |
| 33 | 5.1 | Xây dựng kế hoạch kiểm thử đơn vị dựa trên đặc tả sản phẩm |  | 4d | 2023-08-04 A | 2023-09-01 | 24 | 50% | 2d | 2023-08-09 | 2023-08-14 | 4d | 17d |  | Hoàng Kim; Nguyễn Anh Dũng | 32h | 16h | 1,088 | 448 |
| 34 | 5.2 | Xây dựng kế hoạch kiểm thử tích hợp dựa trên đặc tả sản phẩm |  | 4d | 2023-08-08 A | 2023-09-05 | 24 | 50% | 2d | 2023-08-15 | 2023-08-18 | 4d | 48.33d |  | Hoàng Kim; Nguyễn Anh Dũng | 32h | 16h | 1,088 | 448 |
| 35 | 5.3 | **Kiểm thử đơn vị** |  | 8.5d | 2023-09-26 | 2023-10-06 |  |  |  | 2023-09-25 | 2023-10-13 | 15d | 0d |  |  | 120h |  | 3,464 |  |
| 36 | 5.3.1 | Rà soát mã theo mô-đun |  | 2.5d | 2023-09-26 | 2023-09-28 | 33, 31 |  |  | 2023-09-25 | 2023-09-29 | 5d | 0d |  | Hoàng Kim; Lưu Bảo Châu | 40h |  | 1,160 |  |
| 37 | 5.3.2 | Kiểm thử mô-đun theo đặc tả sản phẩm |  | 1d | 2023-09-29 | 2023-09-29 | 31, 36 |  |  | 2023-10-02 | 2023-10-03 | 2d | 0d |  | Hoàng Kim; Lưu Bảo Châu | 16h |  | 464 |  |
| 38 | 5.3.3 | Xác định sai lệch so với đặc tả sản phẩm |  | 1.5d | 2023-10-02 | 2023-10-03 | 37 |  |  | 2023-10-04 | 2023-10-06 | 3d | 0d |  | Hoàng Kim; Lưu Bảo Châu | 24h |  | 696 |  |
| 39 | 5.3.4 | Sửa đổi mã nguồn |  | 1.5d | 2023-10-03 | 2023-10-04 | 38 |  |  | 2023-10-09 | 2023-10-11 | 3d | 0d |  | Hoàng Kim; Lưu Bảo Châu | 24h |  | 696 |  |
| 40 | 5.3.5 | Kiểm thử lại mã đã sửa |  | 2d | 2023-10-05 | 2023-10-06 | 39 |  |  | 2023-10-12 | 2023-10-13 | 2d | 0d |  | Hoàng Kim | 16h |  | 448 |  |
| 41 | 5.3.6 | Hoàn tất kiểm thử đơn vị | milestone | 0d | 2023-10-06 | 2023-10-06 | 40 |  |  | 2023-10-13 | 2023-10-13 | 0d | 0d |  |  |  |  |  |  |
| 42 | 5.4 | **Kiểm thử tích hợp** |  | 10.83d | 2023-10-09 | 2023-10-23 |  |  |  | 2023-10-16 | 2023-10-31 | 12d | 0d |  |  | 96h |  | 2,744 |  |
| 43 | 5.4.1 | Kiểm thử tích hợp mô-đun |  | 5d | 2023-10-09 | 2023-10-13 | 41 |  |  | 2023-10-16 | 2023-10-20 | 5d | 0d |  | Hoàng Kim | 40h |  | 1,120 |  |
| 44 | 5.4.2 | Xác định sai lệch so với đặc tả |  | 1d | 2023-10-16 | 2023-10-18 | 43 |  |  | 2023-10-23 | 2023-10-24 | 2d | 0d |  | Hoàng Kim; Phạm Hồng Hạnh | 16h |  | 464 |  |
| 45 | 5.4.3 | Sửa đổi mã nguồn |  | 1.5d | 2023-10-19 | 2023-10-20 | 44 |  |  | 2023-10-25 | 2023-10-27 | 3d | 0d |  | Hoàng Kim; Phạm Hồng Hạnh | 24h |  | 696 |  |
| 46 | 5.4.4 | Kiểm thử lại mã đã sửa |  | 1d | 2023-10-20 | 2023-10-23 | 45 |  |  | 2023-10-30 | 2023-10-31 | 2d | 0d |  | Hoàng Kim; Phạm Hồng Hạnh | 16h |  | 464 |  |
| 47 | 5.4.5 | Hoàn tất kiểm thử tích hợp | milestone | 0d | 2023-10-23 | 2023-10-23 | 46 |  |  | 2023-10-31 | 2023-10-31 | 0d | 0d |  |  |  |  |  |  |
| 48 | 6 | **Đào tạo** |  | 55.83d | 2023-08-04 A | 2023-10-23 |  | 30% | 39.19d | 2023-08-09 | 2023-10-26 | 57d | 0.5d |  |  | 256h | 64h | 7,642.67 | 1,920 |
| 49 | 6.1 | Soạn đặc tả đào tạo cho người dùng cuối |  | 3d | 2023-08-04 A | 2023-08-09 A | 24 | 100% |  | 2023-08-09 | 2023-08-11 | 3d |  |  | Lưu Bảo Châu | 24h | 24h | 720 | 720 |
| 50 | 6.2 | Soạn đặc tả đào tạo cho nhân viên hỗ trợ helpdesk |  | 3d | 2023-08-09 A | 2023-08-14 A | 24 | 100% |  | 2023-08-14 | 2023-08-16 | 3d |  |  | Lưu Bảo Châu | 24h | 24h | 720 | 720 |
| 51 | 6.3 | Xác định phương thức đào tạo (CBT, lớp học, v.v.) |  | 2d | 2023-08-14 A | 2023-08-16 A | 24 | 100% |  | 2023-08-17 | 2023-08-18 | 2d |  |  | Lưu Bảo Châu | 16h | 16h | 480 | 480 |
| 52 | 6.4 | Soạn tài liệu đào tạo |  | 2.8w | 2023-09-26 | 2023-10-16 | 49, 31, 50, 51 |  |  | 2023-09-25 | 2023-10-13 | 3w | 0.5d | 0d | Lưu Bảo Châu; Phạm Hồng Hạnh | 120h |  | 3,600 |  |
| 53 | 6.5 | Thực hiện nghiên cứu khả dụng cho đào tạo |  | 1.33d | 2023-10-16 | 2023-10-17 | 52 |  |  | 2023-10-16 | 2023-10-19 | 4d | 0.5d | 0d | Lưu Bảo Châu; Phạm Hồng Hạnh; Hoàng Kim | 32h |  | 938.67 |  |
| 54 | 6.6 | Hoàn thiện tài liệu đào tạo |  | 1.5d | 2023-10-17 | 2023-10-19 | 53 |  |  | 2023-10-20 | 2023-10-24 | 3d | 0.5d | 0d | Lưu Bảo Châu; Phạm Hồng Hạnh; Hoàng Kim | 24h |  | 704 |  |
| 55 | 6.7 | Xây dựng cơ chế triển khai đào tạo |  | 2d | 2023-10-19 | 2023-10-23 | 54 |  |  | 2023-10-25 | 2023-10-26 | 2d | 0.5d | 0d | Lưu Bảo Châu | 16h |  | 480 |  |
| 56 | 6.8 | Hoàn tất tài liệu đào tạo | milestone | 0d | 2023-10-23 | 2023-10-23 | 55 |  |  | 2023-10-26 | 2023-10-26 | 0d | 0.5d |  |  |  |  |  |  |

| ID | WBS | Task | Type | Duration | Start | Finish | Predecessors | Complete | Remaining | Baseline start | Baseline finish | Baseline duration | Total slack | Free slack | Resources | Work | Actual work | Cost | Actual cost |
| --- | --- | --- | --- | --- | --- | --- | --- | --- | --- | --- | --- | --- | --- | --- | --- | --- | --- | --- | --- |
| 57 | 7 | **Tài liệu hóa** |  | 49.5d | 2023-08-04 A | 2023-10-12 |  | 7% | 45.96d | 2023-08-09 | 2023-10-17 | 49.5d | 6.83d |  |  | 336h | 24h | 10,752 | 768 |
| 58 | 7.1 | Soạn đặc tả Trợ giúp (Help) |  | 1d | 2023-08-04 A | 2023-08-07 A | 24 | 100% |  | 2023-08-09 | 2023-08-09 | 1d |  |  | Đặng Thanh Trúc | 8h | 8h | 256 | 256 |
| 59 | 7.2 | Phát triển hệ thống Trợ giúp (Help) |  | 3w | 2023-08-21 | 2023-09-08 | 58, 29FS-5% |  |  | 2023-08-23 | 2023-09-13 | 3w | 6.83d | 0d | Đặng Thanh Trúc | 120h |  | 3,840 |  |
| 60 | 7.3 | Rà soát tài liệu Trợ giúp |  | 3d | 2023-10-02 | 2023-10-04 | 59 |  |  | 2023-10-04 | 2023-10-09 | 3d | 6.83d | 0d | Đặng Thanh Trúc | 24h |  | 768 |  |
| 61 | 7.4 | Cập nhật phản hồi tài liệu Trợ giúp |  | 2d | 2023-10-11 | 2023-10-12 | 60 |  |  | 2023-10-13 | 2023-10-17 | 2d | 6.83d | 0d | Đặng Thanh Trúc | 16h |  | 512 |  |
| 62 | 7.5 | Soạn đặc tả sổ tay người dùng |  | 2d | 2023-08-07 A | 2023-08-09 A | 24 | 100% |  | 2023-08-10 | 2023-08-11 | 2d |  |  | Đặng Thanh Trúc | 16h | 16h | 512 | 512 |
| 63 | 7.6 | Soạn sổ tay người dùng |  | 3w | 2023-09-11 | 2023-09-29 | 62, 29FS-5% |  |  | 2023-09-13 | 2023-10-04 | 3w | 10d | 0d | Đặng Thanh Trúc | 120h |  | 3,840 |  |
| 64 | 7.7 | Rà soát toàn bộ tài liệu người dùng |  | 2d | 2023-10-05 | 2023-10-06 | 63 |  |  | 2023-10-09 | 2023-10-11 | 2d | 8.83d | 0d | Đặng Thanh Trúc | 16h |  | 512 |  |
| 65 | 7.8 | Cập nhật phản hồi tài liệu người dùng |  | 2d | 2023-10-09 | 2023-10-10 | 64 |  |  | 2023-10-11 | 2023-10-13 | 2d | 8.83d | 2d | Đặng Thanh Trúc | 16h |  | 512 |  |
| 66 | 7.9 | Hoàn tất tài liệu | milestone | 0d | 2023-10-12 | 2023-10-12 | 65, 61 |  |  | 2023-10-17 | 2023-10-17 | 0d | 6.83d |  |  |  |  |  |  |
| 67 | 8 | **Thử nghiệm thí điểm** |  | 77.83d | 2023-07-17 A | 2023-11-01 |  | 22% | 60.54d | 2023-07-19 | 2023-11-09 | 81.5d | 0d |  |  | 64h | 8h | 3,000 | 480 |
| 68 | 8.1 | Xác định nhóm thử nghiệm |  | 1d | 2023-07-17 A | 2023-07-17 A | 16 | 100% |  | 2023-07-19 | 2023-07-20 | 1d |  |  | Phạm Quốc Huy | 8h | 8h | 480 | 480 |
| 69 | 8.2 | Phát triển cơ chế phân phối phần mềm |  | 1d | 2023-07-18 A | 2023-07-18 A | 68 | 100% |  | 2023-07-20 | 2023-07-21 | 1d |  |  |  |  |  |  |  |
| 70 | 8.3 | Cài đặt/triển khai phần mềm |  | 1d | 2023-10-23 | 2023-10-24 | 47, 69, 66, 56 |  |  | 2023-11-01 | 2023-11-01 | 1d | 0d |  | Lê Quốc Huy | 8h |  | 360 |  |
| 71 | 8.4 | Thu thập phản hồi người dùng |  | 1w | 2023-10-24 | 2023-10-31 | 70 |  |  | 2023-11-02 | 2023-11-08 | 1w | 0d |  | Lê Quốc Huy | 40h |  | 1,800 |  |
| 72 | 8.5 | Đánh giá thông tin thử nghiệm |  | 1d | 2023-10-31 | 2023-11-01 | 71 |  |  | 2023-11-09 | 2023-11-09 | 1d | 0d |  | Lê Quốc Huy | 8h |  | 360 |  |
| 73 | 8.6 | Hoàn tất thử nghiệm thí điểm | milestone | 0d | 2023-11-01 | 2023-11-01 | 72 |  |  | 2023-11-09 | 2023-11-09 | 0d | 0d |  |  |  |  |  |  |
| 74 | 9 | **Triển khai** |  | 5d | 2023-11-01 | 2023-11-08 |  |  |  | 2023-11-10 | 2023-11-16 | 5d | 0d |  |  | 40h |  | 1,800 |  |
| 75 | 9.1 | Xác định chiến lược triển khai cuối cùng |  | 1d | 2023-11-01 | 2023-11-02 | 73 |  |  | 2023-11-10 | 2023-11-10 | 1d | 0d |  | Lê Quốc Huy | 8h |  | 360 |  |
| 76 | 9.2 | Xây dựng phương pháp triển khai |  | 1d | 2023-11-02 | 2023-11-03 | 75 |  |  | 2023-11-13 | 2023-11-13 | 1d | 0d |  | Lê Quốc Huy | 8h |  | 360 |  |
| 77 | 9.3 | Đảm bảo nguồn lực triển khai |  | 1d | 2023-11-03 | 2023-11-06 | 76 |  |  | 2023-11-14 | 2023-11-14 | 1d | 0d |  | Lê Quốc Huy | 8h |  | 360 |  |
| 78 | 9.4 | Đào tạo đội ngũ hỗ trợ |  | 1d | 2023-11-06 | 2023-11-07 | 77 |  |  | 2023-11-15 | 2023-11-15 | 1d | 0d |  | Lê Quốc Huy | 8h |  | 360 |  |
| 79 | 9.5 | Triển khai phần mềm |  | 1d | 2023-11-07 | 2023-11-08 | 78 |  |  | 2023-11-16 | 2023-11-16 | 1d | 0d |  | Lê Quốc Huy | 8h |  | 360 |  |
| 80 | 9.6 | Hoàn tất triển khai | milestone | 0d | 2023-11-08 | 2023-11-08 | 79 |  |  | 2023-11-16 | 2023-11-16 | 0d | 0d |  |  |  |  |  |  |

| ID | WBS | Task | Type | Duration | Start | Finish | Predecessors | Baseline start | Baseline finish | Baseline duration | Total slack | Resources | Work | Cost |
| --- | --- | --- | --- | --- | --- | --- | --- | --- | --- | --- | --- | --- | --- | --- |
| 81 | 10 | **Đánh giá sau triển khai** |  | 2d | 2023-11-08 | 2023-11-10 |  | 2023-11-17 | 2023-11-21 | 3d | 0d |  | 24h | 1,320 |
| 82 | 10.1 | Ghi chép bài học kinh nghiệm |  | 1d | 2023-11-08 | 2023-11-09 | 80 | 2023-11-17 | 2023-11-17 | 1d | 0d | Phạm Quốc Huy | 8h | 480 |
| 83 | 10.2 | Phân phát cho các thành viên nhóm |  | 0.5d | 2023-11-09 | 2023-11-10 | 82 | 2023-11-20 | 2023-11-20 | 1d | 0d | Phạm Quốc Huy; Lê Quốc Huy | 8h | 420 |
| 84 | 10.3 | Thành lập nhóm bảo trì phần mềm |  | 0.5d | 2023-11-10 | 2023-11-10 | 83 | 2023-11-21 | 2023-11-21 | 1d | 0d | Phạm Quốc Huy; Lê Quốc Huy | 8h | 420 |
| 85 | 10.4 | Hoàn tất đánh giá sau triển khai | milestone | 0d | 2023-11-10 | 2023-11-10 | 84 | 2023-11-21 | 2023-11-21 | 0d | 0d |  |  |  |
| 86 | 11 | Hoàn tất mẫu quy trình phát triển phần mềm | milestone | 0d | 2023-11-10 | 2023-11-10 | 85 | 2023-11-21 | 2023-11-21 | 0d | 0d |  |  |  |
